Schedule from MS Project XML, 2011-11-21 to 2011-12-23.

## Calendars

- Standard: Mon-Fri 08:00-12:00, 13:00-17:00; Sat-Sun off.

## Resources

| Resource |
| --- |
| julia |
| max |
| designer |

## Schedule

| ID | WBS | Task | Duration | Start | Predecessors | Total slack | Constraint | Resources |
| --- | --- | --- | --- | --- | --- | --- | --- | --- |
| 1 | 1.0 | **Phase5** | 10d | 2011-11-21 |  | 0d | must start on 2011-11-21 |  |
| 2 | 1.1 | Navigation over application | 3d | 2011-11-21 |  | 0d | must start on 2011-11-21 | julia |
| 3 | 1.2 | New MAF form design | 1d | 2011-11-24 | 2 | 0d | must start on 2011-11-24 | julia |
| 4 | 1.3 | Web2.0 feedback mechanism | 3d | 2011-11-25 | 3 | 0d | must start on 2011-11-25 | julia |
| 5 | 1.4 | Undoing form state | 1d | 2011-11-30 | 4 | 0d | must start on 2011-11-30 | julia |
| 6 | 1.5 | Smaller tasks & bugfixes | 2d | 2011-12-01 | 5 | 0d | must start on 2011-12-01 | julia |
| 7 | 2.0 | **Phase6** | 10d | 2011-12-05 |  | 0d | must start on 2011-12-05 |  |
| 8 | 2.1 | Share PR form for editing | 5d | 2011-12-05 | 6 | 0d | must start on 2011-12-05 | julia |
| 9 | 2.2 | New look of Employee form | 1d | 2011-12-12 | 8 | 0d | must start on 2011-12-12 | julia |
| 10 | 2.3 | Set PR date for specific employee | 1d | 2011-12-13 | 9 | 0d | must start on 2011-12-13 | julia |
| 11 | 2.4 | Watchers for specific review | 1d | 2011-12-14 | 10 | 0d | must start on 2011-12-14 | julia |
| 12 | 2.5 | Bugfixing | 2d | 2011-12-15 | 11 | 0d | must start on 2011-12-15 | julia |
| 13 | 2.6 | Develop new design | 5d | 2011-12-05 | 6 | 0d | must start on 2011-12-05 | max [25%]; designer [50%] |
| 14 | 3.0 | **Beta-release** | 10d | 2011-12-19 |  | 0d | must start on 2011-12-19 |  |
| 15 | 3.1 | Implement new design | 4d | 2011-12-19 | 12 | 0d | must start on 2011-12-19 | julia |
| 16 | 3.2 | Testing and bugfixing | 6d | 2011-12-23 | 15 | 0d | must start on 2011-12-23 | julia |
